How a schedule from OmniPlan changed from version to version. A marks actual dates.

## Version 1 (saved 2013-08-07)

Note of the change: 更新进度表

| ID | WBS | Task | Start | Predecessors | Complete |
| --- | --- | --- | --- | --- | --- |
| 1 | 1 | **技术调研Demo制作** |  |  |  |
| 2 |  | 选定框架 | 2013-08-05 |  | 100% |
| 3 |  | 物理引擎Demo | 2013-08-06 | 2 | 20% |
| 4 |  | DragonBones和Box2D的Demo | 2013-08-13 | 3 |  |
| 5 |  | 粒子引擎Demo | 2013-08-16 | 4 |  |
| 6 | 2 | **引子** |  |  |  |
| 7 |  | 故事策划 | 2013-08-08 |  |  |
| 8 |  | 图画 | 2013-08-12 | 7 |  |
| 9 |  | 开发 | 2013-08-19 | 5 |  |
| 10 | 3 | **首页** |  |  |  |
| 11 |  | 策划 | 2013-08-12 | 7 |  |
| 12 |  | 美术 | 2013-08-15 | 8 |  |
| 13 |  | 开发 | 2013-08-20 | 9 |  |
| 14 | 4 | **登陆注册** |  |  |  |
| 15 |  | 产品原型 | 2013-08-08 |  |  |
| 16 |  | UI风格 | 2013-08-19 | 23 |  |
| 17 |  | UI设计 | 2013-08-21 | 16 |  |
| 18 |  | 前端开发 | 2013-08-21 | 13 |  |
| 19 |  | 后台 | 2013-08-02 |  |  |
| 20 |  | 封号默认提供值 | 2013-08-13 | 11 |  |
| 21 | 5 | **个人中心** |  |  |  |
| 22 |  | 个人中心相关策划 | 2013-08-14 | 20 |  |
| 23 |  | 产品原型 | 2013-08-09 | 15 |  |
| 24 |  | UI设计 | 2013-08-22 | 17 |  |
| 25 |  | 个人信息、成就、收集、游戏入口研发 | 2013-08-22 | 18 |  |
| 26 |  | 成就、收集接口 | 2013-08-08 | 19 |  |
| 27 |  | 速成手册 | 2013-08-26 | 25 |  |
| 28 | 5.7 | **地图** |  |  |  |
| 29 |  | 美术 | 2013-08-26 | 24 |  |
| 30 |  | 策划交互点 | 2013-08-21 | 22 |  |
| 31 |  | 开发 | 2013-08-29 | 27 |  |
| 32 |  | 制作团队 |  |  |  |
| 33 | 6 | **社交分享** |  |  |  |
| 34 |  | 策划分享点和文案 | 2013-08-29 | 38 |  |
| 35 |  | 研发 | 2013-08-09 | 26 |  |
| 36 |  | UI皮肤 | 2013-08-27 | 29 |  |
| 37 | 7 | **小狮子动画** |  |  |  |
| 38 |  | 多个动作策划，最好跟模块走 | 2013-08-22 | 30 |  |
| 39 | 8 | **模块1** |  |  |  |
| 40 |  | 策划 | 2013-09-02 | 38 |  |
| 41 |  | 模块UI | 2013-08-28 | 36 |  |
| 42 | 8.3 | **场景一** |  |  |  |
| 43 |  | 美术1 | 2013-08-21 | 16 |  |
| 44 |  | 开发 | 2013-09-02 | 31 |  |
| 45 | 8.4 | **场景二** |  |  |  |
| 46 |  | 美术1，服装 | 2013-08-30 | 41 | 80% |
| 47 |  | 美术2 | 2013-08-22 | 43 |  |
| 48 |  | 开发 | 2013-09-03 | 44 |  |
| 49 |  | 小动画 | 2013-08-26 | 24 |  |
| 50 | 8.5 | **场景三** |  |  |  |
| 51 |  | 美术 | 2013-08-23 | 47 |  |
| 52 |  | 开发 | 2013-09-05 | 48 |  |
| 53 | 9 | **模块2** |  |  |  |
| 54 | 9.1 | **场景1** |  |  |  |
| 55 |  | 策划 | 2013-09-04 | 40 |  |
| 56 |  | 美术 | 2013-08-26 | 51 |  |
| 57 |  | 开发 | 2013-09-06 | 52 |  |
| 58 | 9.2 | **场景2** |  |  |  |
| 59 |  | 策划 | 2013-09-05 | 55 |  |
| 60 |  | 美术 | 2013-08-28 | 56 |  |
| 61 |  | 开发 | 2013-09-09 | 57 |  |
| 62 | 10 | **模块3** |  |  |  |
| 63 |  | 策划 | 2013-09-05 | 55 |  |
| 64 |  | 主场景原画 | 2013-08-30 | 60 |  |
| 65 |  | 游戏元素原画 | 2013-09-03 | 46 |  |
| 66 |  | 开发 | 2013-09-16 | 61 |  |
| 67 | 11 | **模块4** |  |  |  |
| 68 | 11.1 | **场景1** |  |  |  |
| 69 |  | 美术 | 2013-09-04 | 64 |  |
| 70 |  | 策划 | 2013-09-11 | 63 |  |

| ID | WBS | Task | Start | Predecessors |
| --- | --- | --- | --- | --- |
| 71 |  | 开发 | 2013-09-23 | 66 |
| 72 | 11.2 | **场景2** |  |  |
| 73 |  | 美术 | 2013-09-06 | 69 |
| 74 |  | 策划 | 2013-09-13 | 70 |
| 75 |  | 开发 | 2013-09-24 | 71 |
| 76 | 12 | **模块5** |  |  |
| 77 | 12.1 | **场景1** |  |  |
| 78 |  | 策划 | 2013-09-17 | 74 |
| 79 |  | 美术 | 2013-09-10 | 73 |
| 80 |  | 开发 | 2013-10-01 | 75 |
| 81 | 12.2 | **场景2** |  |  |
| 82 |  | 策划 | 2013-09-19 | 78 |
| 83 |  | 美术 | 2013-09-12 | 79 |
| 84 |  | 开发，可写的，可选的 | 2013-10-02 | 80 |
| 85 | 13 | **模块6** |  |  |
| 86 | 13.1 | **场景1** |  |  |
| 87 |  | 策划 | 2013-09-20 | 82 |
| 88 |  | 美术 | 2013-09-16 | 83 |
| 89 |  | 开发 | 2013-10-07 | 84 |
| 90 | 13.2 | **场景2** |  |  |
| 91 |  | 策划 | 2013-09-24 | 87 |
| 92 |  | 美术 | 2013-09-18 | 88 |
| 93 |  | 开发 | 2013-10-08 | 89 |
| 94 |  | 动画 |  |  |

## Version 2 (saved 2013-08-13)

Note of the change: 更新进度

Complete tasks 1 → 4.

Added:

| ID | Task |
| --- | --- |
| 6 | 策划额外讨论 |

Changed:

| ID | Task | Start | Complete | Predecessors |
| --- | --- | --- | --- | --- |
| 3 | 物理引擎Demo |  | 20% → 100% |  |
| 4 | DragonBones和Box2D的Demo |  | 0% → 50% |  |
| 8 | 故事策划 |  | 0% → 100% | none → 6 |
| 9 | 图画 | 2013-08-12 → 2013-08-16 (+4d) |  |  |
| 12 | 策划 | 2013-08-12 → 2013-08-16 (+4d) |  |  |
| 13 | 美术 | 2013-08-15 → 2013-08-21 (+6d) |  |  |
| 17 | UI风格 | 2013-08-19 → 2013-08-13 (-6d) | 0% → 50% |  |
| 18 | UI设计 | 2013-08-21 → 2013-08-15 (-6d) |  |  |
| 21 | 封号默认提供值 | 2013-08-13 → 2013-08-19 (+6d) |  |  |
| 23 | 个人中心相关策划 | 2013-08-14 → 2013-08-20 (+6d) |  |  |
| 25 | UI设计 | 2013-08-22 → 2013-08-16 (-6d) |  |  |
| 30 | 美术 | 2013-08-26 → 2013-08-20 (-6d) |  |  |
| 31 | 策划交互点 | 2013-08-21 → 2013-08-27 (+6d) |  |  |
| 35 | 策划分享点和文案 | 2013-08-29 → 2013-09-04 (+6d) |  |  |
| 37 | UI皮肤 | 2013-08-27 → 2013-08-21 (-6d) |  |  |
| 39 | 多个动作策划，最好跟模块走 | 2013-08-22 → 2013-08-28 (+6d) |  |  |
| 41 | 策划 | 2013-09-02 → 2013-09-06 (+4d) | 0% → 100% |  |
| 42 | 模块UI | 2013-08-28 → 2013-08-22 (-6d) |  |  |
| 44 | 美术1 | 2013-08-21 → 2013-08-23 (+2d) | 0% → 50% |  |
| 47 | 美术1，服装 | 2013-08-30 → 2013-08-26 (-4d) |  |  |
| 48 | 美术2 | 2013-08-22 → 2013-08-27 (+5d) |  |  |
| 50 | 小动画 | 2013-08-26 → 2013-08-20 (-6d) |  |  |
| 52 | 美术 | 2013-08-23 → 2013-08-28 (+5d) |  |  |
| 56 | 策划 | 2013-09-04 → 2013-09-10 (+6d) |  |  |
| 57 | 美术 | 2013-08-26 → 2013-08-29 (+3d) |  |  |
| 60 | 策划 | 2013-09-05 → 2013-09-11 (+6d) |  |  |
| 61 | 美术 | 2013-08-28 → 2013-09-02 (+5d) |  |  |
| 64 | 策划 | 2013-09-05 → 2013-09-11 (+6d) |  |  |
| 65 | 主场景原画 | 2013-08-30 → 2013-09-04 (+5d) |  |  |
| 66 | 游戏元素原画 | 2013-09-03 → 2013-08-28 (-6d) |  |  |
| 70 | 美术 | 2013-09-04 → 2013-09-09 (+5d) |  |  |
| 71 | 策划 | 2013-09-11 → 2013-09-17 (+6d) |  |  |
| 72 | 开发 | 2013-09-23 → 2013-09-24 (+1d) |  |  |
| 74 | 美术 | 2013-09-06 → 2013-09-11 (+5d) |  |  |
| 75 | 策划 | 2013-09-13 → 2013-09-22 (+9d) |  |  |
| 76 | 开发 | 2013-09-24 → 2013-09-25 (+1d) |  |  |
| 79 | 策划 | 2013-09-17 → 2013-09-24 (+7d) |  |  |
| 80 | 美术 | 2013-09-10 → 2013-09-13 (+3d) |  |  |
| 81 | 开发 | 2013-10-01 → 2013-10-09 (+8d) |  |  |
| 83 | 策划 | 2013-09-19 → 2013-09-26 (+7d) |  |  |
| 84 | 美术 | 2013-09-12 → 2013-09-17 (+5d) |  |  |
| 85 | 开发，可写的，可选的 | 2013-10-02 → 2013-10-10 (+8d) |  |  |
| 88 | 策划 | 2013-09-20 → 2013-09-27 (+7d) |  |  |
| 89 | 美术 | 2013-09-16 → 2013-09-22 (+6d) | 0% → 50% |  |
| 90 | 开发 | 2013-10-07 → 2013-10-14 (+7d) |  |  |
| 92 | 策划 | 2013-09-24 → 2013-10-08 (+14d) |  |  |
| 93 | 美术 | 2013-09-18 → 2013-09-24 (+6d) |  |  |
| 94 | 开发 | 2013-10-08 → 2013-10-15 (+7d) |  |  |

## Version 3 (saved 2013-08-14)

Note of the change: 更新进度

Complete tasks 4 → 7.

Added:

| ID | Task | Start | Resources |
| --- | --- | --- | --- |
| 6 | Feathersui框架了解 | 2013-08-14 | 孔聪 |

Changed:

| ID | Task | Start | Complete | Predecessors |
| --- | --- | --- | --- | --- |
| 7 | 策划额外讨论 |  | 80% → 100% |  |
| 9 | 策划 |  |  | 54 → 7 |
| 10 | 模块UI | 2013-08-22 → 2013-08-02 (-20d) |  | 52 → none |
| 12 | 美术1 | 2013-08-23 → 2013-08-02 (-21d) | 50% → 100% | 28 → none |
| 13 | 开发 | 2013-09-02 → 2013-08-19 (-14d) |  | 25 → 1 |
| 15 | 美术1，服装 | 2013-08-26 → 2013-08-06 (-20d) |  |  |
| 16 | 美术2 | 2013-08-27 → 2013-08-06 (-21d) | 0% → 100% |  |
| 17 | 开发 | 2013-09-03 → 2013-08-20 (-14d) |  |  |
| 18 | 小动画 | 2013-08-20 → 2013-08-08 (-12d) |  | 36 → 15 |
| 20 | 美术 | 2013-08-28 → 2013-08-07 (-21d) |  |  |
| 21 | 开发 | 2013-09-05 → 2013-08-22 (-14d) |  |  |
| 23 | 美术 | 2013-08-20 → 2013-08-21 (+1d) |  |  |
| 25 | 开发 | 2013-08-29 → 2013-09-04 (+6d) |  |  |
| 28 | UI风格 | 2013-08-13 → 2013-08-14 (+1d) |  |  |
| 29 | UI设计 | 2013-08-15 → 2013-08-16 (+1d) |  |  |
| 30 | 前端开发 | 2013-08-21 → 2013-08-27 (+6d) |  |  |
| 35 | 产品原型 | 2013-08-09 → 2013-08-12 (+3d) |  |  |
| 36 | UI设计 | 2013-08-16 → 2013-08-19 (+3d) |  |  |
| 37 | 个人信息、成就、收集、游戏入口研发 | 2013-08-22 → 2013-08-28 (+6d) |  |  |
| 39 | 速成手册 | 2013-08-26 → 2013-08-30 (+4d) |  |  |
| 44 | 开发 | 2013-08-19 → 2013-08-22 (+3d) |  |  |
| 48 | 开发 | 2013-08-20 → 2013-08-26 (+6d) |  |  |
| 52 | UI皮肤 | 2013-08-21 → 2013-08-22 (+1d) |  |  |
| 58 | 美术 | 2013-08-29 → 2013-08-08 (-21d) |  |  |
| 59 | 开发 | 2013-09-06 → 2013-09-05 (-1d) |  |  |
| 62 | 美术 | 2013-09-02 → 2013-08-12 (-21d) |  |  |
| 66 | 主场景原画 | 2013-09-04 → 2013-08-23 (-12d) |  |  |
| 67 | 游戏元素原画 | 2013-08-28 → 2013-08-08 (-20d) |  |  |
| 71 | 美术 | 2013-09-09 → 2013-08-29 (-11d) |  |  |
| 75 | 美术 | 2013-09-11 → 2013-09-02 (-9d) |  |  |
| 81 | 美术 | 2013-09-13 → 2013-09-04 (-9d) |  |  |
| 85 | 美术 | 2013-09-17 → 2013-09-06 (-11d) |  |  |
| 90 | 美术 | 2013-09-22 → 2013-09-10 (-12d) |  |  |
| 94 | 美术 | 2013-09-24 → 2013-09-12 (-12d) |  |  |

## Version 4 (saved 2013-08-20)

Note of the change: 进度更新

Complete tasks 7 → 14.

Added:

| ID | Task | Start | Predecessors | Resources |
| --- | --- | --- | --- | --- |
| 7 | Alert组件 | 2013-08-19 |  | 孔聪 |
| 19 | 帽子调整 | 2013-08-21 |  | 夏贝 |
| 34 | 速成手册美术 | 2013-08-19 | 38 | 红明 |

Removed: 10 模块UI

Changed:

| ID | Task | Start | Complete | Predecessors |
| --- | --- | --- | --- | --- |
| 4 | DragonBones和Box2D的Demo |  | 50% → 100% |  |
| 5 | 粒子引擎Demo |  | 0% → 100% |  |
| 6 | Feathersui框架了解 |  | 50% → 100% |  |
| 13 | 开发 |  | 0% → 100% | 1 → 5 |
| 15 | 美术1，服装 |  | 80% → 100% | 模块UI → none |
| 17 | 开发 |  | 0% → 50% |  |
| 21 | 美术 |  | 0% → 100% |  |
| 22 | 开发 |  | 0% → 100% |  |
| 24 | 美术 | 2013-08-21 → 2013-08-08 (-13d) |  | 30 → 21 |
| 25 | 策划交互点 | 2013-08-27 → 2013-08-15 (-12d) | 0% → 80% | 28 → 10 |
| 26 | 开发 | 2013-09-04 → 2013-08-23 (-12d) |  | 33 → 22 |
| 29 | 产品原型 |  | 0% → 30% |  |
| 31 | 个人信息、成就、收集、游戏入口研发 | 2013-08-28 → 2013-08-26 (-2d) |  |  |
| 33 | 速成手册 | 2013-08-30 → 2013-08-29 (-1d) |  |  |
| 40 | 前端开发 | 2013-08-27 → 2013-08-21 (-6d) |  |  |
| 45 | 图画 | 2013-08-16 → 2013-08-19 (+3d) |  |  |
| 46 | 开发 | 2013-08-22 → 2013-08-19 (-3d) |  |  |
| 49 | 美术 | 2013-08-21 → 2013-08-23 (+2d) |  |  |
| 50 | 开发 | 2013-08-26 → 2013-08-20 (-6d) |  |  |
| 52 | 策划分享点和文案 | 2013-09-04 → 2013-09-18 (+14d) |  |  |
| 54 | UI皮肤 | 2013-08-22 → 2013-08-09 (-13d) |  |  |
| 56 | 多个动作策划，最好跟模块走 | 2013-08-28 → 2013-09-11 (+14d) |  |  |
| 61 | 开发 | 2013-09-05 → 2013-09-02 (-3d) |  |  |
| 63 | 策划 | 2013-09-11 → 2013-09-23 (+12d) |  |  |
| 65 | 开发 | 2013-09-09 → 2013-09-04 (-5d) |  |  |
| 67 | 策划 | 2013-09-11 → 2013-09-24 (+13d) |  |  |
| 68 | 主场景原画 | 2013-08-23 → 2013-08-27 (+4d) |  |  |
| 69 | 游戏元素原画 | 2013-08-08 → 2013-08-21 (+13d) |  |  |
| 70 | 开发 | 2013-09-16 → 2013-09-11 (-5d) |  |  |
| 73 | 美术 | 2013-08-29 → 2013-09-02 (+4d) |  |  |
| 74 | 策划 | 2013-09-17 → 2013-09-29 (+12d) |  |  |
| 75 | 开发 | 2013-09-24 → 2013-09-18 (-6d) |  |  |
| 77 | 美术 | 2013-09-02 → 2013-09-04 (+2d) |  |  |
| 78 | 策划 | 2013-09-22 → 2013-10-09 (+17d) |  |  |
| 79 | 开发 | 2013-09-25 → 2013-09-22 (-3d) |  |  |
| 82 | 策划 | 2013-09-24 → 2013-10-11 (+17d) |  |  |
| 83 | 美术 | 2013-09-04 → 2013-09-06 (+2d) |  |  |
| 84 | 开发 | 2013-10-09 → 2013-09-27 (-12d) |  |  |
| 86 | 策划 | 2013-09-26 → 2013-10-14 (+18d) |  |  |
| 87 | 美术 | 2013-09-06 → 2013-09-10 (+4d) |  |  |
| 88 | 开发，可写的，可选的 | 2013-10-10 → 2013-09-29 (-11d) |  |  |
| 91 | 策划 | 2013-09-27 → 2013-10-15 (+18d) |  |  |
| 92 | 美术 | 2013-09-10 → 2013-09-12 (+2d) |  |  |
| 93 | 开发 | 2013-10-14 → 2013-10-10 (-4d) |  |  |
| 95 | 策划 | 2013-10-08 → 2013-10-17 (+9d) |  |  |
| 96 | 美术 | 2013-09-12 → 2013-09-16 (+4d) |  |  |
| 97 | 开发 | 2013-10-15 → 2013-10-11 (-4d) |  |  |

## Version 5 (saved 2013-08-22)

Note of the change: 更新进度

Complete tasks 14 → 16.

Added:

| ID | Task | Start | Predecessors | Resources |
| --- | --- | --- | --- | --- |
| 23 | 研发细节调整 | 2013-08-23 | 22 | 萍钢 |

Changed:

| ID | Task | Start | Complete |
| --- | --- | --- | --- |
| 17 | 开发 |  | 50% → 100% |
| 19 | 帽子调整 |  | 0% → 100% |
| 32 | 个人信息、成就、收集、游戏入口研发 | 2013-08-26 → 2013-08-27 (+1d) |  |
| 34 | 速成手册 | 2013-08-29 → 2013-08-30 (+1d) |  |
| 62 | 开发 | 2013-09-02 → 2013-09-03 (+1d) |  |
| 66 | 开发 | 2013-09-04 → 2013-09-05 (+1d) |  |
| 70 | 游戏元素原画 | 2013-08-21 → 2013-08-20 (-1d) |  |
| 71 | 开发 | 2013-09-11 → 2013-09-12 (+1d) |  |
| 76 | 开发 | 2013-09-18 → 2013-09-22 (+4d) |  |
| 80 | 开发 | 2013-09-22 → 2013-09-23 (+1d) |  |
| 85 | 开发 | 2013-09-27 → 2013-09-29 (+2d) |  |
| 89 | 开发，可写的，可选的 | 2013-09-29 → 2013-10-08 (+9d) |  |
| 94 | 开发 | 2013-10-10 → 2013-10-11 (+1d) |  |
| 98 | 开发 | 2013-10-11 → 2013-10-12 (+1d) |  |

## Version 6 (saved 2013-08-23)

Note of the change: 更新进度

Complete tasks 16 → 17.

Added:

| ID | Task | Start | Resources |
| --- | --- | --- | --- |
| 71 | 场景一策划 | 2013-08-23 | 志泽 |

Changed:

| ID | Task | Start | Complete | Other |
| --- | --- | --- | --- | --- |
| 7 | Alert组件 |  | 80% → 100% |  |
| 23 | 研发细节调整 |  | 0% → 60% |  |
| 27 | 开发 |  |  | resources 萍钢 → 小一 |
| 30 | 产品原型 |  | 30% → 90% |  |
| 32 | 个人信息、成就、收集、游戏入口研发 | 2013-08-27 → 2013-08-22 (-5d) |  |  |
| 34 | 速成手册 | 2013-08-30 → 2013-08-26 (-4d) |  |  |
| 62 | 开发 | 2013-09-03 → 2013-08-28 (-6d) |  |  |
| 66 | 开发 | 2013-09-05 → 2013-08-30 (-6d) |  |  |
| 72 | 开发 | 2013-09-12 → 2013-09-06 (-6d) |  |  |
| 77 | 开发 | 2013-09-22 → 2013-09-13 (-9d) |  |  |
| 81 | 开发 | 2013-09-23 → 2013-09-16 (-7d) |  |  |
| 86 | 开发 | 2013-09-29 → 2013-09-24 (-5d) |  |  |
| 90 | 开发，可写的，可选的 | 2013-10-08 → 2013-09-25 (-13d) |  |  |
| 95 | 开发 | 2013-10-11 → 2013-09-29 (-12d) |  |  |
| 99 | 开发 | 2013-10-12 → 2013-10-08 (-4d) |  |  |

## Version 7 (saved 2013-08-27)

Note of the change: 进度更新

Complete tasks 17 → 19.

Changed:

| ID | Task | Start | Complete |
| --- | --- | --- | --- |
| 23 | 研发细节调整 |  | 60% → 100% |
| 45 | 策划 | 2013-09-24 → 2013-09-11 (-13d) | 0% → 100% |
| 46 | 主场景原画 | 2013-08-27 → 2013-08-19 (-8d) |  |
| 47 | 游戏元素原画 | 2013-08-20 → 2013-08-08 (-12d) |  |
| 56 | 策划 | 2013-09-23 → 2013-09-11 (-12d) |  |
| 61 | 图画 | 2013-08-19 → 2013-08-22 (+3d) |  |
| 65 | 美术 | 2013-08-23 → 2013-08-28 (+5d) |  |
| 68 | 策划分享点和文案 | 2013-09-18 → 2013-09-22 (+4d) |  |
| 70 | UI皮肤 | 2013-08-09 → 2013-08-20 (+11d) |  |
| 75 | 美术 | 2013-09-02 → 2013-08-30 (-3d) |  |
| 76 | 策划 | 2013-09-29 → 2013-09-24 (-5d) |  |
| 80 | 策划 | 2013-10-09 → 2013-09-27 (-12d) |  |
| 84 | 策划 | 2013-10-11 → 2013-10-08 (-3d) |  |
| 88 | 策划 | 2013-10-14 → 2013-10-10 (-4d) |  |
| 93 | 策划 | 2013-10-15 → 2013-10-11 (-4d) |  |
| 97 | 策划 | 2013-10-17 → 2013-10-14 (-3d) |  |

## Version 8 (saved 2013-08-28)

Note of the change: 进度更新

Complete tasks 19 → 21.

Changed:

| ID | Task | Start | Complete |
| --- | --- | --- | --- |
| 25 | 美术 |  | 0% → 80% |
| 27 | 开发 |  | 0% → 100% |
| 46 | 主场景原画 |  | 0% → 100% |
| 47 | 游戏元素原画 |  | 0% → 50% |
| 61 | 图画 | 2013-08-22 → 2013-08-19 (-3d) |  |
| 65 | 美术 | 2013-08-28 → 2013-08-23 (-5d) |  |
| 70 | UI皮肤 | 2013-08-20 → 2013-08-09 (-11d) |  |
| 75 | 美术 | 2013-08-30 → 2013-08-27 (-3d) |  |
| 79 | 美术 | 2013-09-04 → 2013-08-30 (-5d) |  |
| 85 | 美术 | 2013-09-06 → 2013-09-03 (-3d) |  |
| 89 | 美术 | 2013-09-10 → 2013-09-05 (-5d) |  |
| 94 | 美术 | 2013-09-12 → 2013-09-09 (-3d) |  |
| 98 | 美术 | 2013-09-16 → 2013-09-11 (-5d) |  |

## Version 9 (saved 2013-08-29)

Note of the change: 更新计划

Complete tasks 21 → 22.

Changed:

| ID | Task | Complete | Other |
| --- | --- | --- | --- |
| 45 | 总策划 |  | was named 策划 |
| 47 | 游戏元素原画 | 50% → 80% |  |
| 48 | 场景一策划 | 0% → 100% |  |
| 49 | 开发 | 0% → 60% |  |

## Version 10 (saved 2013-09-04)

Note of the change: 更新计划

Complete tasks 22 → 24.

Changed:

| ID | Task | Start | Complete | Other |
| --- | --- | --- | --- | --- |
| 47 | 游戏元素原画 |  | 80% → 100% |  |
| 49 | 开发 |  | 60% → 100% |  |
| 52 | 美术 | 2013-08-27 → 2013-08-23 (-4d) | 0% → 50% | resources 红明 → 夏贝 |
| 53 | 策划 | 2013-09-24 → 2013-09-16 (-8d) | 0% → 50% |  |
| 56 | 美术 | 2013-08-30 → 2013-08-27 (-3d) | 0% → 50% |  |
| 57 | 策划 | 2013-09-27 → 2013-09-18 (-9d) | 0% → 50% |  |
| 77 | 策划分享点和文案 | 2013-09-22 → 2013-09-29 (+7d) |  |  |
| 81 | 多个动作策划，最好跟模块走 | 2013-09-11 → 2013-09-22 (+11d) |  |  |
| 84 | 策划 | 2013-10-08 → 2013-10-09 (+1d) |  |  |
| 85 | 美术 | 2013-09-03 → 2013-08-29 (-5d) |  |  |
| 88 | 策划 | 2013-10-10 → 2013-10-12 (+2d) |  |  |
| 89 | 美术 | 2013-09-05 → 2013-09-02 (-3d) |  |  |
| 93 | 策划 | 2013-10-11 → 2013-10-14 (+3d) |  |  |
| 94 | 美术 | 2013-09-09 → 2013-09-04 (-5d) |  |  |
| 97 | 策划 | 2013-10-14 → 2013-10-16 (+2d) |  |  |
| 98 | 美术 | 2013-09-11 → 2013-09-06 (-5d) |  |  |

## Version 11 (saved 2013-09-05)

Note of the change: 进度更新

Complete tasks 24 → 25.

Changed:

| ID | Task | Start | Complete |
| --- | --- | --- | --- |
| 56 | 美术 |  | 50% → 40% |
| 57 | 策划 |  | 50% → 100% |
| 58 | 开发 |  | 0% → 50% |
| 77 | 策划分享点和文案 | 2013-09-29 → 2013-09-26 (-3d) |  |
| 81 | 多个动作策划，最好跟模块走 | 2013-09-22 → 2013-09-17 (-5d) |  |
| 84 | 策划 | 2013-10-09 → 2013-09-29 (-10d) |  |
| 88 | 策划 | 2013-10-12 → 2013-10-10 (-2d) |  |
| 93 | 策划 | 2013-10-14 → 2013-10-11 (-3d) |  |
| 97 | 策划 | 2013-10-16 → 2013-10-14 (-2d) |  |

## Version 12 (saved 2013-09-09)

Note of the change: 更新进度

Changed:

| ID | Task | Start | Complete | Other |
| --- | --- | --- | --- | --- |
| 56 | 美术 |  | 40% → 80% |  |
| 58 | 开发 |  | 50% → 60% |  |
| 59 | **模块4** |  |  | was named 模块6 |
| 61 | 策划 | 2013-10-11 → 2013-09-26 (-15d) |  |  |
| 65 | 策划 | 2013-10-14 → 2013-09-29 (-15d) |  |  |
| 87 | 策划分享点和文案 | 2013-09-26 → 2013-10-15 (+19d) |  |  |
| 91 | 多个动作策划，最好跟模块走 | 2013-09-17 → 2013-10-08 (+21d) |  |  |
| 94 | 策划 | 2013-09-29 → 2013-09-23 (-6d) |  |  |
| 98 | 策划 | 2013-10-10 → 2013-09-25 (-15d) |  |  |

## Version 13 (saved 2013-09-11)

Note of the change: 进度更新

Complete tasks 25 → 26.

Changed:

| ID | Task | Complete |
| --- | --- | --- |
| 25 | 美术 | 80% → 100% |
